# National Health campaign

Schedule from MS Project, 2024-03-06 to 2024-05-02, costs in £, A marks actual dates.
Research programme
ABC research Ltd

## Calendars

- Standard: Mon-Fri 08:00-12:00, 13:00-17:00; Sat-Sun off.

## Resources

| Resource | Group | Rate |
| --- | --- | --- |
| Joanne Kelly | Management | 19.23 |
| Riona Carr | Executive | 6.25 |
| Mary Breen | Management | 19.23 |
| Tom Joyce | office staff | 6.88 |
| Conf Room | Facilties |  |
| Junior Staff | Office staff | 3.75 |
| Printing | External |  |

## Schedule

| ID | WBS | Task | Type | Duration | Start | Finish | Predecessors | Complete | Remaining | Baseline start | Baseline finish | Baseline duration | Total slack | Free slack | Constraint | Resources | Work | Actual work | Cost | Baseline cost | Actual cost |
| --- | --- | --- | --- | --- | --- | --- | --- | --- | --- | --- | --- | --- | --- | --- | --- | --- | --- | --- | --- | --- | --- |
| 1 | 1 | **National Health Campaign** |  | 42d? | 2024-03-06 A | 2024-05-02 |  | 54% | 19.38d? | 2024-03-06 | 2024-05-02 | 42d? |  |  |  |  | 412h | 204h | 3,454.42 | 3,454.42 | 1,789.81 |
| 2 | 1.1 | **Survey setup** |  | 42d? | 2024-03-06 A | 2024-05-02 |  | 54% | 19.38d? | 2024-03-06 | 2024-05-02 | 42d? |  |  |  |  | 412h | 204h | 3,454.42 | 3,454.42 | 1,789.81 |
| 3 | 1.1.1 | **Planning** |  | 13d | 2024-03-06 A | 2024-03-22 |  | 18% | 10.64d | 2024-03-06 | 2024-03-22 | 13d |  |  |  |  | 88h | 16h | 487.69 | 487.69 | 307.69 |
| 4 | 1.1.1.1 | Design questionnaire |  | 2d | 2024-03-06 A | 2024-03-07 A |  | 100% |  | 2024-03-06 | 2024-03-07 | 2d |  |  |  | Joanne Kelly | 16h | 16h | 307.69 | 307.69 | 307.69 |
| 5 | 1.1.1.2 | Type questionnaire |  | 1d | 2024-03-08 | 2024-03-08 | 4, 10 |  |  | 2024-03-08 | 2024-03-08 | 1d | 34d | 0d | finish no earlier than 2024-03-07 | Junior Staff | 8h |  | 30 | 30 |  |
| 6 | 1.1.1.3 | Print questionnaire |  | 1w | 2024-03-11 | 2024-03-15 | 5 |  |  | 2024-03-11 | 2024-03-15 | 1w | 34d | 0d |  | Printing | 40h |  |  |  |  |
| 7 | 1.1.1.4 | Invite interviewers to briefing meeting |  | 3d | 2024-03-11 | 2024-03-13 | 6SS |  |  | 2024-03-11 | 2024-03-13 | 3d | 36d | 0d |  | Riona Carr | 24h |  | 150 | 150 |  |
| 8 | 1.1.1.5 | Survey planning complete | milestone | 0d | 2024-03-13 | 2024-03-13 | 7 |  |  | 2024-03-13 | 2024-03-13 | 0d | 36d |  |  |  |  |  |  |  |  |
| 9 | 1.1.2 | **Briefing setup** |  | 10d | 2024-03-06 A | 2024-03-19 |  | 28% | 7.25d | 2024-03-06 | 2024-03-19 | 10d |  |  |  |  | 80h | 22h | 524.42 | 524.42 | 132.07 |
| 10 | 1.1.2.1 | Book conference room for briefing meeting | manual | 4h | 2024-03-06 A | 2024-03-06 |  | 25% | 3h | 2024-03-06 | 2024-03-06 | 4h |  |  |  | Tom Joyce | 4h | 1h | 27.5 | 27.5 | 6.88 |
| 11 | 1.1.2.2 | Contact interviewing locations | manual | 2d | 2024-03-06 | 2024-03-07 | 10SS |  |  | 2024-03-06 | 2024-03-07 | 2d |  |  |  | Tom Joyce | 16h |  | 110 | 110 |  |
| 12 | 1.1.2.3 | Prepare rosters |  | 4d | 2024-03-08 | 2024-03-13 | 11 |  |  | 2024-03-08 | 2024-03-13 | 4d | 2.25d | 0d |  | Tom Joyce | 32h |  | 220 | 220 |  |
| 13 | 1.1.2.4 | Prepare packs for each interviewer |  | 3d | 2024-03-14 A | 2024-03-18 | 12 | 75% | 0.75d | 2024-03-14 | 2024-03-18 | 3d | 0.38d | 0d |  | Junior Staff | 24h | 18h | 90 | 90 | 67.5 |
| 14 | 1.1.2.5 | Briefing Meeting with Interviewers |  | 4h | 2024-03-19 A | 2024-03-19 | 13 | 75% | 1h | 2024-03-19 | 2024-03-19 | 4h | 0d |  |  | Joanne Kelly | 4h | 3h | 76.92 | 76.92 | 57.69 |
| 15 | 1.1.2.6 | Interviewers briefing complete | milestone | 0d | 2024-03-19 A | 2024-03-19 | 14 | 75% | 0d | 2024-03-19 | 2024-03-19 | 0d | 0d |  |  | Riona Carr |  |  |  |  |  |
| 16 | 1.1.3 | **Data Processing** |  | 26d | 2024-03-19 A | 2024-04-24 | 9 | 79% | 5.5d | 2024-03-19 | 2024-04-24 | 26d |  |  |  |  | 196h | 130h | 1,519.23 | 1,519.23 | 657.74 |
| 17 | 1.1.3.1 | Prepare Book-in forms |  | 2d | 2024-03-19 A | 2024-03-21 A |  | 100% |  | 2024-03-19 | 2024-03-21 | 2d |  |  |  | Riona Carr | 16h | 16h | 100 | 100 | 100 |
| 18 | 1.1.3.2 | Check questionnaires |  | 2d | 2024-03-21 A | 2024-03-25 A | 17 | 100% |  | 2024-03-21 | 2024-03-25 | 2d |  |  |  | Junior Staff | 16h | 16h | 60 | 60 | 60 |
| 19 | 1.1.3.3 | Code questionnaires |  | 1.5w | 2024-03-19 A | 2024-03-28 A | 18FF-3d | 100% |  | 2024-03-19 | 2024-03-28 | 1.5w |  |  |  | Junior Staff | 60h | 60h | 225 | 225 | 225 |
| 20 | 1.1.3.4 | Input data in computer |  | 3d | 2024-03-26 A | 2024-03-28 A | 19FS-3d | 100% |  | 2024-03-26 | 2024-03-28 | 3d |  |  |  | Junior Staff | 24h | 24h | 90 | 90 | 90 |
| 21 | 1.1.3.5 | Analyse the data |  | 5d | 2024-03-29 A | 2024-04-19 | 20 | 18% | 4.12d | 2024-03-29 | 2024-04-19 | 5d | 1d | 0d | start no earlier than 2024-03-11 | Joanne Kelly; Tom Joyce | 80h | 14h | 1,044.23 | 1,044.23 | 182.74 |
| 22 | 1.1.3.6 | Data processing complete | milestone | 0d | 2024-04-19 | 2024-04-19 | 21 |  |  | 2024-04-19 | 2024-04-19 | 0d | 1d |  |  | Mary Breen; Joanne Kelly |  |  |  |  |  |
| 23 | 1.1.4 | **Interpretation** |  | 8d | 2024-04-23 A | 2024-05-02 | 16 | 75% | 2d | 2024-04-23 | 2024-05-02 | 8d | 0d |  |  |  | 48h | 36h | 923.08 | 923.08 | 692.31 |
| 24 | 1.1.4.1 | Prepare presentation |  | 3d | 2024-04-23 A | 2024-04-25 |  | 75% | 0.75d | 2024-04-23 | 2024-04-25 | 3d | 3.75d | 0d |  | Joanne Kelly; Mary Breen | 48h | 36h | 923.08 | 923.08 | 692.31 |
| 25 | 1.1.4.2 | Prepare research report |  | 1w | 2024-04-26 A | 2024-05-02 | 24 | 75% | 0.25w | 2024-04-26 | 2024-05-02 | 1w | 0d |  |  |  |  |  |  |  |  |
| 26 | 1.1.4.3 | Project complete | milestone | 0d | 2024-05-02 A | 2024-05-02 | 25 | 75% | 0d | 2024-05-02 | 2024-05-02 | 0d | 0d |  |  |  |  |  |  |  |  |
